# GI IT MOD DWH Migration - Project Plan - v4

Schedule from MS Project, 2021-07-01 to 2023-01-05.

## Calendars

- Standard: Mon-Fri 08:00-12:00, 13:00-17:00; Sat-Sun off.

## Resources

| Resource |
| --- |
| ACN |
| AIG(DBA |
| MW |
| CloudEngineering) |
| AIG (ProdServices) |

## Schedule

| ID | WBS | Task | Type | Duration | Start | Finish | Predecessors | Total slack | Constraint | Resources | Work |
| --- | --- | --- | --- | --- | --- | --- | --- | --- | --- | --- | --- |
| 1 | 1 | **Data IT Mod - Legacy DW Migration to Cloud** |  | 396d? | 2021-07-01 | 2023-01-05 |  |  |  |  | 15416h |
| 2 | 1.1 | Pre Planning and Discovery | manual | 64d? | 2021-07-05 | 2021-09-30 |  |  |  |  |  |
| 3 | 1.2 | Establish Overall Migration Approach | manual | 1mo? | 2021-08-16 | 2021-09-10 |  |  |  |  |  |
| 4 | 1.3 | Target State Architecture | manual | 30d | 2021-08-16 | 2021-09-24 |  |  |  |  |  |
| 5 | 1.4 | Environment Readiness for Build | manual | 30d? | 2021-08-16 | 2021-09-24 |  |  |  |  |  |
| 6 | 1.5 | Proof of Concept - Use Cases | manual | 40d | 2021-08-30 | 2021-10-22 |  |  |  |  |  |
| 7 | 1.6 | **Release Plan - Staggered Approach** |  | 340d? | 2021-08-30 | 2022-12-16 |  |  |  |  | 15416h |
| 8 | 1.6.1 | **Wave 1 - RRD MA Auto/GRA Delivery 1** |  | 195d? | 2021-09-20 | 2022-06-17 |  | 0d |  |  | 5944h |
| 9 | 1.6.1.1 | **1801 - UW-RRD-MA AUTO REPORTING** |  | 23d? | 2022-03-09 | 2022-04-08 |  | 0d |  |  | 408h |
| 10 | 1.6.1.1.1 | Analysis and Design | manual | 3d | 2022-03-09 | 2022-03-11 |  |  |  | ACN | 24h |
| 11 | 1.6.1.1.2 | Build and Unit Testing | manual | 10d | 2022-03-14 | 2022-03-25 |  |  |  | ACN | 80h |
| 12 | 1.6.1.1.3 | QA Test Execution | manual | 6d? | 2022-03-28 | 2022-04-04 |  |  |  | ACN; AIG (ProdServices) | 96h |
| 13 | 1.6.1.1.4 | UAT Execution | manual | 4d? | 2022-03-31 | 2022-04-05 |  |  |  | ACN; AIG (ProdServices) | 64h |
| 14 | 1.6.1.1.5 | PRR - Privacy and Regulatory Review and Approval | manual | 4d | 2022-04-04 | 2022-04-07 |  |  |  | ACN; AIG (ProdServices) | 64h |
| 15 | 1.6.1.1.6 | P2O - Permit to Operate | manual | 4d? | 2022-04-04 | 2022-04-07 |  |  |  | ACN; AIG (ProdServices) | 64h |
| 16 | 1.6.1.1.7 | Prod Deployment | manual | 1d? | 2022-04-08 | 2022-04-08 |  |  |  | ACN; AIG (ProdServices) | 16h |
| 17 | 1.6.1.2 | **3598 - ES-GRA-ETL (Phase 1)/3028 - ERM-GRA-Reporting (Phase 1)** |  | 195d? | 2021-09-20 | 2022-06-17 |  |  |  |  | 3408h |
| 18 | 1.6.1.2.1 | Analysis and Design | manual | 5d | 2021-09-20 | 2021-09-24 |  |  | finish no earlier than 2021-09-24 | ACN | 40h |
| 19 | 1.6.1.2.2 | Build and Unit Testing | manual | 160d? | 2021-09-27 | 2022-05-06 | 18 |  |  | ACN | 1280h |
| 20 | 1.6.1.2.3 | Higher Environment Readiness (QA/UAT/PROD) |  | 1d? | 2021-09-20 | 2021-09-20 |  | 338d |  | AIG(DBA; MW; CloudEngineering) | 24h |
| 21 | 1.6.1.2.4 | QA Test Execution |  | 73d? | 2022-02-16 | 2022-05-27 |  | 159d | finish no earlier than 2022-05-27 | ACN; AIG (ProdServices) | 1168h |
| 22 | 1.6.1.2.5 | UAT Execution | manual | 45d | 2022-04-11 | 2022-06-10 |  |  |  | ACN; AIG (ProdServices) | 720h |
| 23 | 1.6.1.2.6 | PRR - Privacy and Regulatory Review and Approval | manual | 5d | 2022-06-06 | 2022-06-10 |  |  |  | ACN; AIG (ProdServices) | 80h |
| 24 | 1.6.1.2.7 | P2O - Permit to Operate | manual | 5d | 2022-06-06 | 2022-06-10 |  |  |  | ACN; AIG (ProdServices) | 80h |
| 25 | 1.6.1.2.8 | Prod Deployment | manual | 1d | 2022-06-17 | 2022-06-17 |  |  |  | ACN; AIG (ProdServices) | 16h |

| ID | WBS | Task | Type | Duration | Start | Finish | Total slack | Resources | Work |
| --- | --- | --- | --- | --- | --- | --- | --- | --- | --- |
| 26 | 1.6.1.3 | **1802 - UW-RRD-MASSSTATECU** |  | 125d? | 2021-11-01 | 2022-04-22 | 0d |  | 2128h |
| 27 | 1.6.1.3.1 | Analysis and Design | manual | 30d | 2021-11-01 | 2021-12-10 |  | ACN | 240h |
| 28 | 1.6.1.3.2 | Build and Unit Testing | manual | 95d | 2021-11-01 | 2022-03-11 |  | ACN | 760h |
| 29 | 1.6.1.3.3 | Higher Environment Readiness (QA/UAT/PROD) | manual | 1d? | 2021-11-01 | 2021-11-01 |  | AIG(DBA; MW; CloudEngineering) | 24h |
| 30 | 1.6.1.3.4 | QA Test Execution | manual | 43d | 2022-02-16 | 2022-04-15 |  | ACN; AIG (ProdServices) | 688h |
| 31 | 1.6.1.3.5 | UAT Execution | manual | 15d | 2022-03-28 | 2022-04-15 |  | ACN; AIG (ProdServices) | 240h |
| 32 | 1.6.1.3.6 | PRR - Privacy and Regulatory Review and Approval | manual | 5d | 2022-04-11 | 2022-04-15 |  | ACN; AIG (ProdServices) | 80h |
| 33 | 1.6.1.3.7 | P2O - Permit to Operate | manual | 5d | 2022-04-11 | 2022-04-15 |  | ACN; AIG (ProdServices) | 80h |
| 34 | 1.6.1.3.8 | Prod Deployment | manual | 1d | 2022-04-22 | 2022-04-22 |  | ACN; AIG (ProdServices) | 16h |
| 35 | 1.6.2 | **Wave 2 - RRD MASSSTATE/GRA/ALIR/Alert Services/GTP Reporting** |  | 315d? | 2021-08-30 | 2022-11-11 | 0d |  | 9472h |
| 36 | 1.6.2.1 | **3598 - ES-GRA-ETL (Completion)/3028 - ERM-GRA-Reporting (Completion)** |  | 101d? | 2022-05-06 | 2022-09-23 | 0d |  | 2856h |
| 37 | 1.6.2.1.1 | Analysis and Design | manual | 21d | 2022-05-06 | 2022-06-03 |  | ACN | 168h |
| 38 | 1.6.2.1.2 | Build and Unit Testing | manual | 71d | 2022-05-06 | 2022-08-12 |  | ACN | 568h |
| 39 | 1.6.2.1.3 | Higher Environment Readiness (QA/UAT/PROD) | manual | 1d? | 2022-05-06 | 2022-05-06 |  | AIG(DBA; MW; CloudEngineering) | 24h |
| 40 | 1.6.2.1.4 | QA Test Execution | manual | 70d | 2022-05-30 | 2022-09-02 |  | ACN; AIG (ProdServices) | 1120h |
| 41 | 1.6.2.1.5 | UAT Execution | manual | 50d | 2022-07-11 | 2022-09-16 |  | ACN; AIG (ProdServices) | 800h |
| 42 | 1.6.2.1.6 | PRR - Privacy and Regulatory Review and Approval | manual | 5d | 2022-09-12 | 2022-09-16 |  | ACN; AIG (ProdServices) | 80h |
| 43 | 1.6.2.1.7 | P2O - Permit to Operate | manual | 5d | 2022-09-12 | 2022-09-16 |  | ACN; AIG (ProdServices) | 80h |
| 44 | 1.6.2.1.8 | Prod Deployment | manual | 1d | 2022-09-23 | 2022-09-23 |  | ACN; AIG (ProdServices) | 16h |
| 45 | 1.6.2.2 | **1708 - UW-ALIR** |  | 177d? | 2022-03-10 | 2022-11-11 | 0d |  | 3016h |
| 46 | 1.6.2.2.1 | Analysis and Design | manual | 20d | 2022-03-10 | 2022-04-06 |  | ACN | 160h |
| 47 | 1.6.2.2.2 | Build and Unit Testing | manual | 120d | 2022-03-28 | 2022-09-09 |  | ACN | 960h |
| 48 | 1.6.2.2.3 | Higher Environment Readiness (QA/UAT/PROD) | manual | 1d? | 2022-03-10 | 2022-03-10 |  | AIG(DBA; MW; CloudEngineering) | 24h |
| 49 | 1.6.2.2.4 | QA Test Execution | manual | 70d | 2022-07-11 | 2022-10-14 |  | ACN; AIG (ProdServices) | 1120h |
| 50 | 1.6.2.2.5 | UAT Execution | manual | 36d | 2022-09-16 | 2022-11-04 |  | ACN; AIG (ProdServices) | 576h |
| 51 | 1.6.2.2.6 | PRR - Privacy and Regulatory Review and Approval | manual | 5d | 2022-10-31 | 2022-11-04 |  | ACN; AIG (ProdServices) | 80h |
| 52 | 1.6.2.2.7 | P2O - Permit to Operate | manual | 5d | 2022-10-31 | 2022-11-04 |  | ACN; AIG (ProdServices) | 80h |
| 53 | 1.6.2.2.8 | Prod Deployment | manual | 1d | 2022-11-11 | 2022-11-11 |  | ACN; AIG (ProdServices) | 16h |

| ID | WBS | Task | Type | Duration | Start | Finish | Total slack | Resources | Work |
| --- | --- | --- | --- | --- | --- | --- | --- | --- | --- |
| 54 | 1.6.2.3 | **3472 - UW-GTP Reporting** |  | 125d? | 2022-03-28 | 2022-09-16 | 0d |  | 1760h |
| 55 | 1.6.2.3.1 | Analysis and Design | manual | 20d | 2022-03-28 | 2022-04-22 |  | ACN | 160h |
| 56 | 1.6.2.3.2 | Build and Unit Testing | manual | 75d | 2022-04-18 | 2022-07-29 |  | ACN | 600h |
| 57 | 1.6.2.3.3 | Higher Environment Readiness (QA/UAT/PROD) | manual | 1d? | 2022-03-28 | 2022-03-28 |  | AIG(DBA; MW; CloudEngineering) | 24h |
| 58 | 1.6.2.3.4 | QA Test Execution | manual | 25d | 2022-07-18 | 2022-08-19 |  | ACN; AIG (ProdServices) | 400h |
| 59 | 1.6.2.3.5 | UAT Execution | manual | 25d | 2022-08-08 | 2022-09-09 |  | ACN; AIG (ProdServices) | 400h |
| 60 | 1.6.2.3.6 | PRR - Privacy and Regulatory Review and Approval | manual | 5d | 2022-09-05 | 2022-09-09 |  | ACN; AIG (ProdServices) | 80h |
| 61 | 1.6.2.3.7 | P2O - Permit to Operate | manual | 5d | 2022-09-05 | 2022-09-09 |  | ACN; AIG (ProdServices) | 80h |
| 62 | 1.6.2.3.8 | Prod Deployment | manual | 1d | 2022-09-16 | 2022-09-16 |  | ACN; AIG (ProdServices) | 16h |
| 63 | 1.6.2.4 | **1707 - UW-ALERT SERVICE** |  | 110d? | 2022-05-16 | 2022-10-14 | 0d |  | 1720h |
| 64 | 1.6.2.4.1 | Analysis and Design | manual | 20d | 2022-05-16 | 2022-06-10 |  | ACN | 160h |
| 65 | 1.6.2.4.2 | Build and Unit Testing | manual | 60d | 2022-05-30 | 2022-08-19 |  | ACN | 480h |
| 66 | 1.6.2.4.3 | Higher Environment Readiness (QA/UAT/PROD) | manual | 1d? | 2022-05-16 | 2022-05-16 |  | AIG(DBA; MW; CloudEngineering) | 24h |
| 67 | 1.6.2.4.4 | QA Test Execution | manual | 25d | 2022-08-22 | 2022-09-23 |  | ACN; AIG (ProdServices) | 400h |
| 68 | 1.6.2.4.5 | UAT Execution | manual | 30d | 2022-08-29 | 2022-10-07 |  | ACN; AIG (ProdServices) | 480h |
| 69 | 1.6.2.4.6 | PRR - Privacy and Regulatory Review and Approval | manual | 5d | 2022-10-03 | 2022-10-07 |  | ACN; AIG (ProdServices) | 80h |
| 70 | 1.6.2.4.7 | P2O - Permit to Operate | manual | 5d | 2022-10-03 | 2022-10-07 |  | ACN; AIG (ProdServices) | 80h |
| 71 | 1.6.2.4.8 | Prod Deployment | manual | 1d | 2022-10-14 | 2022-10-14 |  | ACN; AIG (ProdServices) | 16h |
| 72 | 1.6.2.5 | Wave 3 - ADB Completion | manual | 1d? | 2021-08-30 | 2021-08-30 |  |  |  |
| 73 | 1.6.2.6 | **1974 - GM-EMIS (ADB Modernization Completion)** |  | 55d | 2021-08-30 | 2021-11-12 |  |  | 120h |
| 74 | 1.6.2.6.1 | Analysis and Design | manual | 1d | 2021-08-30 | 2021-08-30 |  | ACN | 8h |
| 75 | 1.6.2.6.2 | Build and Unit Testing | manual | 1d | 2021-08-30 | 2021-08-30 |  | ACN | 8h |
| 76 | 1.6.2.6.3 | Higher Environment Readiness (QA/UAT/PROD) | manual | 1d? | 2021-08-30 | 2021-08-30 |  | AIG(DBA; MW; CloudEngineering) | 24h |
| 77 | 1.6.2.6.4 | QA Test Execution | manual | 1d? | 2021-08-30 | 2021-08-30 |  | ACN; AIG (ProdServices) | 16h |
| 78 | 1.6.2.6.5 | UAT Execution | manual | 1d? | 2021-08-30 | 2021-08-30 |  | ACN; AIG (ProdServices) | 16h |
| 79 | 1.6.2.6.6 | PRR - Privacy and Regulatory Review and Approval | manual | 1d? | 2021-08-30 | 2021-08-30 |  | ACN; AIG (ProdServices) | 16h |
| 80 | 1.6.2.6.7 | P2O - Permit to Operate | manual | 1d? | 2021-08-30 | 2021-08-30 |  | ACN; AIG (ProdServices) | 16h |
| 81 | 1.6.2.6.8 | Prod Deployment | manual | 1d? | 2021-08-30 | 2021-08-30 |  | ACN; AIG (ProdServices) | 16h |
| 82 | 1.6.2.7 | Warranty | manual | 1d | 2021-08-30 | 2021-08-30 |  |  |  |
